# ProjectPlanning

Schedule from MS Project, 2016-09-02 to 2017-01-03, costs in $.
MonteVista Solutions, Inc.

## Calendars

- Standard: Mon-Fri 08:00-12:00, 13:00-17:00; Sat-Sun off.

## Resources

| Resource | Rate |
| --- | --- |
| Developer1 | 40 |
| Developer2 | 40 |
| Test Engineer | 30 |
| Project Manager | 45 |
| Development and Operation | 35 |
| Requirements Analyst | 40 |

## Schedule

| ID | WBS | Task | Type | Duration | Start | Finish | Predecessors | Total slack | Free slack | Constraint | Resources | Work | Cost |
| --- | --- | --- | --- | --- | --- | --- | --- | --- | --- | --- | --- | --- | --- |
| 1 | 1 | Project kickoff |  | 1d | 2016-09-02 | 2016-09-02 |  | 87d |  | start no earlier than 2016-09-02 | Project Manager; Developer1; Developer2; Test Engineer | 32h | 1,240 |
| 2 | 2 | **Vision definition** |  | 29d | 2016-09-05 | 2016-10-13 |  |  |  |  |  | 56h | 2,520 |
| 3 | 2.1 | Define vision |  | 2d | 2016-09-05 | 2016-09-06 |  | 82d | 22d | start no earlier than 2016-09-05 | Project Manager | 16h | 720 |
| 4 | 2.2 | Review vision |  | 3d | 2016-10-07 | 2016-10-11 | 3 | 60d |  | finish no earlier than 2016-10-11 | Project Manager | 24h | 1,080 |
| 5 | 2.3 | Approve and publish vision |  | 2d | 2016-10-12 | 2016-10-13 |  | 44.5d | 0d | finish no earlier than 2016-10-13 | Project Manager | 16h | 720 |
| 6 | 2.4 | Vision definition complete | milestone | 0d | 2016-10-13 | 2016-10-13 | 5 | 44.5d | 1d |  | Project Manager |  |  |
| 7 | 3 | **Feasibility definition** |  | 15d | 2016-09-05 | 2016-09-23 |  |  |  |  |  | 72h | 2,880 |
| 8 | 3.1 | Executive Summary |  | 2d | 2016-09-05 | 2016-09-06 |  | 74d | 0d | start no earlier than 2016-09-05 | Requirements Analyst | 16h | 640 |
| 9 | 3.2 | Review Executive Summary |  | 3d | 2016-09-07 | 2016-09-09 | 8 | 74d | 0d | finish no earlier than 2016-09-09 | Requirements Analyst | 24h | 960 |
| 10 | 3.3 | Define Feasibility | manual | 1d | 2016-09-12 | 2016-09-15 | 9 |  |  |  | Requirements Analyst | 8h | 320 |
| 11 | 3.4 | Review Feasibility | manual | 3d | 2016-09-20 | 2016-09-22 | 10 |  |  |  | Requirements Analyst | 24h | 960 |
| 12 | 3.5 | Approve and publish feasibility | milestone | 0d | 2016-09-22 | 2016-09-22 | 11 | 73d | 0d | start no earlier than 2016-09-20 | Project Manager |  |  |
| 13 | 3.6 | Feasibility definition complete | milestone | 0d | 2016-09-22 | 2016-09-22 | 12 | 73d |  |  | Requirements Analyst |  |  |
| 14 | 4 | **Set up project** |  | 7d | 2016-10-14 | 2016-10-24 |  |  |  |  |  | 120h | 5,000 |
| 15 | 4.1 | Define project plan |  | 6d | 2016-09-07 | 2016-09-14 |  | 59d | 0d | finish no earlier than 2016-09-14 | Project Manager | 48h | 2,160 |
| 16 | 4.2 | Review project plan | manual | 4d | 2016-09-15 | 2016-10-06 | 15 |  |  |  | Project Manager | 32h | 1,440 |
| 17 | 4.3 | Approve and publish project plan | milestone, manual | 0d | 2016-10-13 | 2016-10-13 | 16 |  |  |  | Project Manager |  |  |
| 18 | 4.4 | Project plan complete | milestone, manual | 0d | 2016-10-17 | 2016-10-17 | 17 |  |  |  | Project Manager |  |  |
| 19 | 4.5 | Set up working environment |  | 5d | 2016-09-19 | 2016-09-23 |  | 72d |  | finish no earlier than 2016-09-16 | Development and Operation | 40h | 1,400 |
| 20 | 4.6 | Project setup complete | milestone | 0d | 2016-09-16 | 2016-09-16 |  | 64.5d | 21d | start no earlier than 2016-09-16 | Development and Operation |  |  |
| 21 | 5 | **Requirement Analysis** |  | 24d | 2016-10-14 | 2016-11-16 |  |  |  |  |  | 136h | 5,440 |
| 22 | 5.1 | Use Case Diagrams |  | 0.75d | 2016-09-16 | 2016-09-16 |  | 71.75d | 0d | finish no earlier than 2016-09-16 | Requirements Analyst | 6h | 240 |
| 23 | 5.2 | Use Case Prioritization | manual | 0.25d | 2016-09-16 | 2016-09-16 | 22 |  |  |  | Requirements Analyst | 2h | 80 |
| 24 | 5.3 | UC1 Fully Dressed | manual | 3d | 2016-10-04 | 2016-10-06 | 23 |  |  |  | Requirements Analyst | 24h | 960 |
| 25 | 5.4 | UC1 SSD | manual | 1.5d | 2016-10-07 | 2016-10-10 | 24 |  |  |  | Requirements Analyst | 12h | 480 |
| 26 | 5.5 | Operation Contracts | manual | 0.5d | 2016-10-10 | 2016-10-10 |  |  |  | start no earlier than 2016-10-10 | Requirements Analyst | 4h | 160 |
| 27 | 5.6 | Supplementary Specification | manual | 3d | 2016-09-13 | 2016-09-15 |  |  |  | start no earlier than 2016-09-13 | Requirements Analyst | 24h | 960 |
| 28 | 5.7 | UC2 Fully Dressed | manual | 4d | 2016-11-07 | 2016-11-10 |  |  |  |  | Requirements Analyst | 32h | 1,280 |
| 29 | 5.8 | UC2 SSD | manual | 4d | 2016-11-11 | 2016-11-16 |  |  |  |  | Requirements Analyst | 32h | 1,280 |

| ID | WBS | Task | Type | Duration | Start | Finish | Predecessors | Total slack | Free slack | Constraint | Resources | Work | Cost |
| --- | --- | --- | --- | --- | --- | --- | --- | --- | --- | --- | --- | --- | --- |
| 30 | 6 | **Product Design** |  | 24d | 2016-10-14 | 2016-11-16 |  |  |  |  |  | 96h | 3,840 |
| 31 | 6.1 | High level architecture- logical view |  | 1d | 2016-10-11 | 2016-10-11 |  | 60d |  | finish no earlier than 2016-10-11 | Developer1; Developer2; Requirements Analyst | 24h | 960 |
| 32 | 6.2 | Composite Diagrams | manual | 1d | 2016-10-12 | 2016-10-12 |  |  |  |  | Developer1; Developer2; Requirements Analyst | 24h | 960 |
| 33 | 6.3 | UI Design | manual | 1d | 2016-10-13 | 2016-10-13 |  |  |  |  | Developer1 | 8h | 320 |
| 34 | 6.4 | DB Design | manual | 1d | 2016-10-13 | 2016-10-13 |  |  |  |  | Developer2 | 8h | 320 |
| 35 | 6.5 | System detailed design document | manual | 1d | 2016-10-14 | 2016-10-14 |  |  |  | start no earlier than 2016-10-14 | Developer1; Developer2 | 16h | 640 |
| 36 | 6.6 | Review UI Design | manual | 1d | 2016-11-09 | 2016-11-09 |  |  |  |  | Developer1 | 8h | 320 |
| 37 | 6.7 | Review DB Design | manual | 1d | 2016-11-09 | 2016-11-09 |  |  |  |  | Developer2 | 8h | 320 |
| 38 | 7 | **Release 1** |  | 57d | 2016-10-17 | 2017-01-03 |  | 0d |  |  |  | 318.8h | 12,386 |
| 39 | 7.1 | **Release 1 plan** |  | 3d | 2016-10-17 | 2016-10-19 |  | 43.5d |  |  |  | 140h | 5,380 |
| 40 | 7.1.1 | Develop release strategy and vision |  | 0.5d | 2016-10-17 | 2016-10-17 | 20, 6 | 43.5d | 0d | start no earlier than 2016-10-17 | Developer1; Developer2; Project Manager; Test Engineer; Requirements Analyst | 20h | 780 |
| 41 | 7.1.2 | Identify focus for release |  | 0.5d | 2016-10-17 | 2016-10-17 | 40 | 43.5d | 0d |  | Developer1; Developer2; Development and Operation; Project Manager; Test Engineer; Requirements Analyst | 24h | 920 |
| 42 | 7.1.3 | Develop sprint strategies |  | 1.5d | 2016-10-18 | 2016-10-19 | 41 | 43.5d | 0d |  | Developer1; Developer2; Development and Operation; Project Manager; Requirements Analyst; Test Engineer | 72h | 2,760 |
| 43 | 7.1.4 | Release plan 1 complete |  | 0.5d | 2016-10-19 | 2016-10-19 | 42 | 43.5d | 0d |  | Developer1; Developer2; Development and Operation; Project Manager; Requirements Analyst; Test Engineer | 24h | 920 |
| 44 | 7.2 | **Sprint 1** |  | 54d | 2016-10-20 | 2017-01-03 |  | 0d |  |  |  | 86.4h | 3,358 |
| 45 | 7.2.1 | **Sprint 1 plan** |  | 1d | 2016-10-20 | 2016-10-20 |  | 43.5d |  |  |  | 16h | 640 |
| 46 | 7.2.1.1 | Assign UC1 Story |  | 0.25d | 2016-10-20 | 2016-10-20 | 43 | 43.5d | 0d |  | Developer1; Developer2 | 4h | 160 |
| 47 | 7.2.1.2 | Sprint 1 plan complete |  | 0.75d | 2016-10-20 | 2016-10-20 | 46 | 43.5d | 0d |  | Developer1; Developer2 | 12h | 480 |
| 48 | 7.2.2 | **Sprint 1 execution** |  | 9d | 2016-10-21 | 2016-11-02 | 47 | 43.5d |  |  |  | 50.4h | 1,998 |
| 49 | 7.2.2.1 | Daily scrum |  | 9d | 2016-10-21 | 2016-11-02 |  | 43.5d | 0d |  | Developer1 [15%]; Developer2 [15%]; Test Engineer [15%]; Project Manager [15%] | 43.2h | 1,674 |
| 50 | 7.2.2.2 | Review and maintain sprint plan |  | 9d | 2016-10-21 | 2016-11-02 |  | 43.5d | 0d |  | Project Manager [10%] | 7.2h | 324 |
| 51 | 7.2.3 | Sprint execution complete | milestone | 0d | 2016-11-02 | 2016-11-02 | 49, 50 | 43.5d | 0d |  | Test Engineer |  |  |
| 52 | 7.2.4 | Sprint 1 review |  | 0.25d | 2016-11-03 | 2016-11-03 | 51 | 43.5d | 0d |  | Test Engineer | 2h | 60 |
| 53 | 7.2.5 | Sprint 1 retrospective |  | 0.25d | 2016-11-03 | 2016-11-03 | 52 | 43.5d | 0d |  | Project Manager; Developer1; Developer2; Development and Operation; Test Engineer | 10h | 380 |
| 54 | 7.2.6 | Sprint 1 complete | milestone | 0d | 2016-11-03 | 2016-11-03 | 53 | 43.5d |  | finish no earlier than 2016-11-02 | Developer1; Developer2; Development and Operation; Project Manager; Test Engineer |  |  |
| 55 | 7.2.7 | Release 1.1 build |  | 1d | 2017-01-03 | 2017-01-03 |  | 0d |  | start no earlier than 2017-01-03 | Development and Operation | 8h | 280 |

Notes:
- 55: Link to completion milestone for last sprint in release

| ID | WBS | Task | Type | Duration | Start | Finish | Predecessors | Total slack | Free slack | Constraint | Resources | Work | Cost |
| --- | --- | --- | --- | --- | --- | --- | --- | --- | --- | --- | --- | --- | --- |
| 56 | 7.3 | **Sprint 2** |  | 11d | 2016-11-10 | 2016-11-24 |  | 28d |  |  |  | 84.4h | 3,288 |
| 57 | 7.3.1 | **Sprint 2 plan** |  | 1d | 2016-11-10 | 2016-11-10 |  | 28.5d |  |  |  | 16h | 640 |
| 58 | 7.3.1.1 | Assign UC2 Story |  | 0.25d | 2016-11-10 | 2016-11-10 |  | 28.5d | 0d | start no earlier than 2016-11-10 | Developer1; Developer2 | 4h | 160 |
| 59 | 7.3.1.2 | Sprint 1 plan complete |  | 0.75d | 2016-11-10 | 2016-11-10 | 58 | 28.5d | 0d |  | Developer1; Developer2 | 12h | 480 |
| 60 | 7.3.2 | **Sprint 2 execution** |  | 9d | 2016-11-11 | 2016-11-23 | 59 | 28.5d |  |  |  | 50.4h | 1,998 |
| 61 | 7.3.2.1 | Daily scrum |  | 9d | 2016-11-11 | 2016-11-23 |  | 28.5d | 0d |  | Developer1 [15%]; Developer2 [15%]; Test Engineer [15%]; Project Manager [15%] | 43.2h | 1,674 |
| 62 | 7.3.2.2 | Review and maintain sprint plan |  | 9d | 2016-11-11 | 2016-11-23 |  | 28.5d | 0d |  | Project Manager [10%] | 7.2h | 324 |
| 63 | 7.3.3 | Sprint execution complete | milestone | 0d | 2016-11-23 | 2016-11-23 | 61, 62 | 28.5d | 0d |  | Test Engineer |  |  |
| 64 | 7.3.4 | Sprint 2 review |  | 0.25d | 2016-11-24 | 2016-11-24 | 63 | 28.5d | 0d |  | Test Engineer | 2h | 60 |
| 65 | 7.3.5 | Sprint 2 retrospective |  | 0.25d | 2016-11-24 | 2016-11-24 | 64 | 28.5d | 0d |  | Project Manager; Developer1; Developer2; Test Engineer | 8h | 310 |
| 66 | 7.3.6 | Sprint 2 complete | milestone | 0d | 2016-11-24 | 2016-11-24 | 65 | 28.5d |  |  | Developer1; Developer2; Development and Operation; Project Manager; Test Engineer |  |  |
| 67 | 7.3.7 | Release 1.2 build |  | 1d | 2016-11-24 | 2016-11-24 |  | 28d |  | start no earlier than 2016-11-24 | Development and Operation | 8h | 280 |
| 68 | 7.4 | Product presentation and demo | manual | 1d | 2016-10-17 | 2016-10-17 |  |  |  |  | Project Manager | 8h | 360 |

Notes:
- 67: Link to completion milestone for last sprint in release
